# CDL Project Plan without Lows2

Schedule from MS Project, 2009-02-12 to 2010-02-13, costs in $, A marks actual dates.
National Instruments

## Calendars

- Standard: Mon-Fri 08:00-12:00, 13:00-17:00; Sat-Sun off. Exceptions (off unless hours are given): 2010-02-13 08:00-12:00, 13:00-17:00.

## Resources

| Resource | Group | Rate |
| --- | --- | --- |
| John | Marketing | 100 |
| Jane | Marketing | 100 |
| Wendy | Marketing | 100 |
| Karen | Marketing | 100 |
| Joseph | IT | 80 |
| Raj | IT | 80 |
| Christopher | IT | 80 |
| Lydia | Marketing | 100 |
| Inoka | Marketing | 100 |
| William | Sales | 200 |
| Richard | Sales | 200 |
| Samantha | Sales | 200 |
| Roger | IT | 80 |
| Ricky | IT | 80 |
| Joan | IT | 80 |
| Jeffrey | IT | 80 |
| Judith | Sales | 200 |
| Mary | Sales | 200 |
| Tyler | Sales | 200 |
| Shaun | Sales | 200 |
| Tiffany | Sales | 200 |
| Jackie | Sales | 200 |

## Schedule

| ID | WBS | Task | Type | Duration | Start | Finish | Predecessors | Complete | Remaining | Total slack | Free slack | Resources | Work | Actual work | Cost | Actual cost | Text1 | Text2 | Text3 |
| --- | --- | --- | --- | --- | --- | --- | --- | --- | --- | --- | --- | --- | --- | --- | --- | --- | --- | --- | --- |
| 1 | 1 | **Requirements and Development** |  | 231.99d? | 2009-02-12 A | 2010-01-01 |  | 2% | 228.31d? | 30.01d |  |  | 3608h | 37.5h | 354,447.5 | 3,900 |  |  |  |
| 2 | 1.1 | **Module 1** |  | 231.99d? | 2009-02-12 A | 2010-01-01 |  | 5% | 220.13d? | 30.01d |  |  | 996h | 37.5h | 88,113.33 | 3,900 |  |  |  |
| 3 | 1.1.1 | **Eligible Transaction Sources** |  | 111.79d? | 2009-02-12 A | 2009-07-17 |  | 61% | 43.92d? | 150.21d |  |  | 33h | 15h | 3,600 | 1,650 |  |  |  |
| 4 | 1.1.1.1 | Identify all sources that go into loader |  | 0.5d? | 2009-07-17 A | 2009-07-17 A |  | 100% |  |  |  | Jane [50%] | 2h | 2h | 200 | 200 |  |  |  |
| 5 | 1.1.1.2 | Identify sources that skip loader |  | 1.5d? | 2009-07-09 A | 2009-07-13 A |  | 100% |  |  |  | Jane [50%] | 6h | 6h | 600 | 600 | High | High | Intake Process |
| 6 | 1.1.1.3 | Identify sources that skip loader |  | 1d? | 2009-07-14 A | 2009-07-15 A |  | 100% |  |  |  | Jane [50%] | 4h | 4h | 400 | 400 | High | Medium | Intake Process |
| 7 | 1.1.1.4 | Forecast of data volumes / rates from various sources by seasonality, geography for sizing |  | 0.38d? | 2009-02-12 A | 2009-02-12 |  | 50% | 0.19d? | 186.62d | 0d | Lydia; Mary | 6h | 3h | 900 | 450 | High | Medium | Intake Process |
| 8 | 1.1.1.5 | Current Country Routing Rules | milestone | 0d? | 2009-02-12 | 2009-02-12 |  |  |  | 261.62d |  | Lydia |  |  |  |  | High | High | Intake Process |
| 9 | 1.1.1.6 | Identify initial Source uptake priority (will require further analysis) |  | 1.88d? | 2009-05-18 | 2009-05-20 | 7 |  |  | 187.21d | 0d | Jane [50%]; John | 15h |  | 1,500 |  | High | High | Intake Process |
| 10 | 1.1.2 | **Stakeholder Discussions** |  | 93.79d? | 2009-03-10 A | 2009-07-20 |  | 44% | 52.41d? | 149.71d |  |  | 34h | 15h | 3,400 | 1,500 |  |  |  |
| 11 | 1.1.2.1 | Create Interview Questions and identify stakeholders, etc |  | 1.25d? | 2009-03-10 A | 2009-03-11 A |  | 100% |  |  |  | Jane [50%] | 5h | 5h | 500 | 500 | High | High | Intake Process |
| 12 | 1.1.2.2 | Review Stakeholder Questions and Interview Candidates |  | 0.5d? | 2009-03-12 A | 2009-03-13 A | 11 | 100% |  |  |  | Jane [50%] | 2h | 2h | 200 | 200 |  |  |  |
| 13 | 1.1.2.3 | Interview and document feedback for stakeholders |  | 2.5d? | 2009-03-13 A | 2009-03-17 | 12 | 80% | 0.5d? | 122.17d | 0d | Jane [50%] | 10h | 8h | 1,000 | 800 | Medium | High | Intake Process |
| 14 | 1.1.2.4 | Translate Stakeholder Feedback into Business Requirements |  | 3.75d? | 2009-06-08 | 2009-06-12 | 13 |  |  | 175.96d |  | Jane [50%] | 15h |  | 1,500 |  |  |  |  |
| 15 | 1.1.2.5 | Evaluate web Roadmap impact to project |  | 0.5d? | 2009-07-17 | 2009-07-20 |  |  |  | 149.71d |  | Jane [50%] | 2h |  | 200 |  | High | High | Intake Process |
| 16 | 1.1.3 | **Business Rules for Incoming Loader Data** |  | 49.38d? | 2009-05-08 A | 2009-07-17 |  | 3% | 47.73d? | 150.71d |  |  | 75h | 2.5h | 7,500 | 250 |  |  |  |
| 17 | 1.1.3.1 | Determine minimum data requirements |  | 1.25d? | 2009-07-13 A | 2009-07-14 |  | 50% | 0.62d? | 153.71d |  | Jane [50%] | 5h | 2.5h | 500 | 250 | High | High | Intake Process |
| 18 | 1.1.3.2 | Routing Rules for Incoming Data |  | 2d? | 2009-07-03 | 2009-07-07 |  |  |  | 158.12d |  | Jane [50%] | 8h |  | 800 |  |  |  |  |
| 19 | 1.1.3.3 | Understand and Document As-IS Web Validations |  | 1d? | 2009-07-15 | 2009-07-16 |  |  |  | 151.71d |  | Jane [50%] | 4h |  | 400 |  | Low | Medium | Intake Process |
| 20 | 1.1.3.4 | Current Loaderdata validation |  | 3d? | 2009-05-08 | 2009-05-13 |  |  |  | 179.71d | 0d | Jane [50%] | 12h |  | 1,200 |  | High | High | Intake Process |
| 21 | 1.1.3.5 | Future Loader data validation requirements |  | 1d? | 2009-05-13 | 2009-05-14 | 20 |  |  | 179.71d | 0d | Jane [50%] | 4h |  | 400 |  |  |  |  |
| 22 | 1.1.3.6 | Loader Transformation Rules (ie Organization Name = person name rule) |  | 2d? | 2009-05-14 | 2009-05-18 | 21 |  |  | 179.71d | 0d | Jane [50%] | 8h |  | 800 |  |  |  |  |
| 23 | 1.1.3.7 | Review Current hard-link Process (and when they are broken). |  | 1d? | 2009-07-16 | 2009-07-17 |  |  |  | 150.71d |  | Jane [50%] | 4h |  | 400 |  | Medium | Medium | Intake Process |
| 24 | 1.1.3.8 | Data Rules Proof of Concept (use sample data) |  | 7.5d? | 2009-05-27 | 2009-06-08 | 22 |  |  | 179.71d |  | Jane [50%] | 30h |  | 3,000 |  | Medium | Medium | Intake Process |

| ID | WBS | Task | Duration | Start | Finish | Predecessors | Complete | Remaining | Total slack | Free slack | Constraint | Resources | Work | Actual work | Cost | Actual cost | Text1 | Text2 | Text3 |
| --- | --- | --- | --- | --- | --- | --- | --- | --- | --- | --- | --- | --- | --- | --- | --- | --- | --- | --- | --- |
| 25 | 1.1.4 | **Definition of Intake Priorities (Metadata)** | 10d? | 2009-03-31 A | 2009-04-14 |  | 20% | 8d? | 111.92d |  |  |  | 25h | 5h | 2,500 | 500 |  |  |  |
| 26 | 1.1.4.1 | Review current development new Priorities Maintenance tool | 2.5d? | 2009-03-31 A | 2009-04-03 | 13 | 50% | 1.25d? | 110.92d | 0d |  | Jane [50%] | 10h | 5h | 1,000 | 500 | Medium | High | Intake Process |
| 27 | 1.1.4.2 | Evaluate SLA impacts for transaction source | 3.75d? | 2009-04-08 | 2009-04-14 | 26 |  |  | 111.92d | 0.33d |  | Jane [50%] | 15h |  | 1,500 |  | Medium | High | Intake Process |
| 28 | 1.1.5 | **File Load process map and gap** | 192.63d? | 2009-04-03 | 2009-12-29 |  |  |  | 30.01d |  |  |  | 35h |  | 4,500 |  |  |  |  |
| 29 | 1.1.5.1 | File load business requirements | 0.5d? | 2009-04-03 | 2009-04-03 |  |  |  | 30.01d | 0d |  | Jane [50%]; Lydia | 6h |  | 600 |  | Medium | High | Intake Process |
| 30 | 1.1.5.2 | File Load Functional Requirements | 1.25d? | 2009-04-07 | 2009-04-08 | 29 |  |  | 30.01d | 0d |  | Jane [50%]; Lydia | 15h |  | 1,500 |  | Medium | Medium | Intake Process |
| 31 | 1.1.5.3 | File Load Error Reporting Requirements | 0.33d? | 2009-04-14 | 2009-04-14 | 30 |  |  | 30.01d | 0d |  | Jane [50%]; Lydia | 4h |  | 400 |  | Medium | Medium | Intake Process |
| 32 | 1.1.5.4 | Design File Load application | 1.25d? | 2009-12-28 | 2009-12-29 | 31 |  |  | 30.01d | 0d |  | Jackie | 10h |  | 2,000 |  | Medium | High | Intake Process |
| 33 | 1.1.6 | **Product Data Source process map and gap** | 57.12d? | 2009-03-09 | 2009-05-27 |  |  |  | 140.88d |  |  |  | 66h |  | 6,200 |  |  |  |  |
| 34 | 1.1.6.1 | Product Data Source Business Requirements | 1.5d? | 2009-03-09 | 2009-03-10 |  |  |  | 178.29d | 0d |  | Jane [50%] | 6h |  | 600 |  |  |  |  |
| 35 | 1.1.6.2 | Product Data Source Functional Requirements | 10d? | 2009-03-17 | 2009-03-31 | 34 |  |  | 178.29d | 37.42d |  | Jane [50%] | 40h |  | 4,000 |  | Medium | High | Intake Process |
| 36 | 1.1.6.3 | Design Product Data Source Solution | 3.12d? | 2009-05-22 | 2009-05-27 | 35 |  |  | 140.88d | 0d | start no earlier than 2009-05-22 | Joseph [80%] | 20h |  | 1,600 |  | Medium | High | Intake Process |
| 37 | 1.1.7 | **Business Rules for Outgoing Data** | 61.79d? | 2009-04-06 | 2009-07-01 |  |  |  | 162.62d |  |  |  | 16h |  | 1,600 |  |  |  |  |
| 38 | 1.1.7.1 | Define data sent back to sources | 3d? | 2009-06-26 | 2009-07-01 |  |  |  | 162.62d |  |  | Jane [50%] | 12h |  | 1,200 |  | High | High | Intake process |
| 39 | 1.1.7.2 | Define communication back to Web for Hard Link and Statuses | 1d? | 2009-04-06 | 2009-04-07 |  |  |  | 176.71d | 0d |  | Jane [50%] | 4h |  | 400 |  |  |  |  |
| 40 | 1.1.8 | **Junk data analysis – approach options** | 76.62d? | 2009-03-11 | 2009-06-26 |  |  |  | 161.42d |  |  |  | 50h |  | 4,933.33 |  | High | High | Intake Process |
| 41 | 1.1.8.1 | Consensus on acceptable junk data% | 0.83d? | 2009-03-11 | 2009-03-12 |  |  |  | 161.42d | 61.42d |  | John; Jane [50%]; Christopher | 10h |  | 933.33 |  | Medium | High | Intake Process |
| 42 | 1.1.8.2 | Junk Analysis Testing | 3.33d? | 2009-06-23 | 2009-06-26 |  |  |  | 165.62d |  |  | Jane [50%]; Lydia | 40h |  | 4,000 |  | High | High | Intake Process |
| 43 | 1.1.9 | Document Intake Queue technical requirements | 0.67d? | 2009-09-07 | 2009-09-08 | 46 |  |  | 113.69d |  |  | Karen [75%] | 4h |  | 400 |  | Medium | High | Intake Process |
| 44 | 1.1.10 | Process flow for Intake Queue | 2.5d? | 2009-04-20 | 2009-04-23 | 39 |  |  | 176.58d | 0d |  | Jane [50%] | 10h |  | 1,000 |  | High | High | Intake Process |
| 45 | 1.1.11 | Document Intake Queue business requirements | 1d? | 2009-06-22 | 2009-06-23 | 13 |  |  | 168.96d |  |  | Jane [50%] | 4h |  | 400 |  | High | High | Intake Process |
| 46 | 1.1.12 | Requirements Review and Post Review Adjustments | 2d? | 2009-04-15 | 2009-04-17 | 31, 27 |  |  | 111.58d | 0d |  | Jane [50%] | 8h |  | 800 |  | Medium | High | Intake Process |
| 47 | 1.1.13 | Finalize Source uptake Schedule | 5d? | 2009-05-20 | 2009-05-27 | 9, 46 |  |  | 187.21d |  |  | Jane [50%] | 20h |  | 2,000 |  |  |  | Intake Process |
| 48 | 1.1.14 | **Development** | 231.99d? | 2009-02-12 | 2010-01-01 |  |  |  | 30.01d |  |  |  | 616h |  | 49,280 |  |  |  |  |
| 49 | 1.1.14.1 | Re-design loader (modify it to use loader q) | 3.12d? | 2009-08-25 | 2009-08-28 |  |  |  | 119.91d | 89.9d |  | Joseph [80%] | 20h |  | 1,600 |  | High | High | Intake Process |
| 50 | 1.1.14.2 | Develop File Loader | 10.94d? | 2009-08-07 | 2009-08-24 | 30 |  |  | 124.59d | 94.59d |  | Joseph [80%] | 70h |  | 5,600 |  | High | Medium | Intake Process |
| 51 | 1.1.14.3 | Re-design Product Data Source (modify it to use loader) | 3.12d? | 2009-12-29 | 2010-01-01 | 32 |  |  | 30.01d | 0d |  | Joseph [80%] | 20h |  | 1,600 |  | High | High | Intake Process |
| 52 | 1.1.14.4 | Implement Product modifications | 12.5d? | 2009-07-14 | 2009-07-30 | 36 |  |  | 140.84d | 110.84d |  | Joseph [80%] | 80h |  | 6,400 |  | High | High | Intake Process |
| 53 | 1.1.14.5 | Design metadata for priority manager | 0.78d? | 2009-05-27 | 2009-05-27 | 36 |  |  | 186.94d | 156.93d |  | Joseph [80%] | 5h |  | 400 |  | High | High | Intake Process |
| 54 | 1.1.14.6 | Design priority manager | 0.78d? | 2009-04-03 | 2009-04-03 | 26 |  |  | 206.14d | 0.07d |  | Joseph [80%] | 5h |  | 400 |  | High | High | Intake Process |
| 55 | 1.1.14.7 | Develop priority manager | 6.25d? | 2009-04-10 | 2009-04-20 | 54 |  |  | 206.28d | 0.25d |  | Joseph [80%] | 40h |  | 3,200 |  | High | High | Intake Process |
| 56 | 1.1.14.8 | Develop loader/result queues | 1.56d? | 2009-05-11 | 2009-05-12 | 44 |  |  | 177.09d | 0d |  | Joseph [80%] | 10h |  | 800 |  | High | High | Intake Process |
| 57 | 1.1.14.9 | Develop result queue subscriber | 2.34d? | 2009-05-12 | 2009-05-15 | 56 |  |  | 177.09d | 0d |  | Joseph [80%] | 15h |  | 1,200 |  | High | High | Intake Process |
| 58 | 1.1.14.10 | Modify Web API (clear Ids on substantial change, add missing event monitoring) | 7.81d? | 2009-05-21 | 2009-06-02 | 59 |  |  | 183.34d |  |  | Joseph [80%] | 50h |  | 4,000 |  | High | High | Intake Process |
| 59 | 1.1.14.11 | Develop Web Subscriber (hard link) | 4.69d? | 2009-05-15 | 2009-05-21 | 57 |  |  | 177.09d | 0d |  | Joseph [80%] | 30h |  | 2,400 |  | High | High | Intake Process |
| 60 | 1.1.14.12 | Develop Loader Close Loop (to send activities) | 7.81d? | 2009-05-21 | 2009-06-02 | 59 |  |  | 177.09d | 0d |  | Joseph [80%] | 50h |  | 4,000 |  | High | High | Intake Process |
| 61 | 1.1.14.13 | Develop back-end script loader API | 6.25d? | 2009-06-02 | 2009-06-10 | 60 |  |  | 177.09d |  |  | Joseph [80%] | 40h |  | 3,200 |  | High | High | Intake Process |
| 62 | 1.1.14.14 | Create AutoDeploys/Installers | 1.56d? | 2009-04-03 | 2009-04-06 |  |  |  | 224.28d | 194.27d |  | Joseph [80%] | 10h |  | 800 |  | High | High | Intake Process |
| 63 | 1.1.14.15 | Design/code reviews | 1.56d? | 2009-04-29 | 2009-04-30 | 55 |  |  | 206.28d | 176.27d |  | Joseph [80%] | 10h |  | 800 |  | Medium | High | Intake Process |
| 64 | 1.1.14.16 | Create scripts/queries for troubleshooting | 3.12d? | 2009-04-27 | 2009-04-30 | 55 |  |  | 206.72d | 176.71d |  | Joseph [80%] | 20h |  | 1,600 |  | Low | Medium | Intake Process |
| 65 | 1.1.14.17 | Reports - technology and tools | 15.62d? | 2009-02-12 | 2009-03-05 |  |  |  | 246.38d |  |  | Joseph [80%] | 100h |  | 8,000 |  | Medium | Medium | Intake Process |
| 66 | 1.1.14.18 | Additional Development | 6.25d? | 2009-07-15 | 2009-07-23 | 46 |  |  | 146.47d | 116.46d |  | Joseph [80%] | 40h |  | 3,200 |  | High | High | Intake Process |
| 67 | 1.1.14.19 | Dev Complete | 0.16d? | 2010-01-01 | 2010-01-01 | 66, 52, 50, 49, 51, 53, 54, 55, 56, 59, 60, 62, 63, 64 |  |  | 30.01d |  | start no earlier than 2009-10-30 | Joseph [80%] | 1h |  | 80 |  | High | High | Intake Process |

| ID | WBS | Task | Duration | Start | Finish | Predecessors | Total slack | Free slack | Resources | Work | Cost | Text1 | Text2 | Text3 |
| --- | --- | --- | --- | --- | --- | --- | --- | --- | --- | --- | --- | --- | --- | --- |
| 68 | 1.2 | **Module 2** | 186.14d? | 2009-02-12 | 2009-10-30 |  | 75.86d |  |  | 1075h | 93,320 |  |  |  |
| 69 | 1.2.1 | **Decide on best record v/s best score (for each entity for all sources)** | 6.38d? | 2009-02-12 | 2009-02-20 |  | 150.88d |  |  | 51h | 5,100 |  |  |  |
| 70 | 1.2.1.1 | Review all Sources | 0.5d? | 2009-02-12 | 2009-02-12 |  | 150.88d | 0d | John | 4h | 400 | High | High | Core |
| 71 | 1.2.1.2 | Meet with key business owners from owning Apps | 1.25d? | 2009-02-12 | 2009-02-13 | 70 | 150.88d | 0d | John | 10h | 1,000 | High | High | Core |
| 72 | 1.2.1.3 | Obtain sample data from key areas with BR and w/out | 0.75d? | 2009-02-13 | 2009-02-16 | 71 | 150.88d | 0d | John | 6h | 600 | High | High | Core |
| 73 | 1.2.1.4 | Review sample data for with BR and w/out | 3.75d? | 2009-02-16 | 2009-02-20 | 72 | 150.88d | 0d | John | 30h | 3,000 | High | High | Core |
| 74 | 1.2.1.5 | Communicate BR decision to team and stakeholders | 0.12d? | 2009-02-20 | 2009-02-20 | 73 | 150.88d | 0d | John | 1h | 100 | High | High | Core |
| 75 | 1.2.2 | **Set thresholds - for all attributes** | 15.23d? | 2009-02-20 | 2009-03-13 | 74 | 150.88d |  |  | 105h | 10,500 |  |  |  |
| 76 | 1.2.2.1 | Algorithm change Impacts | 1.25d? | 2009-03-12 | 2009-03-13 |  | 240.4d |  | John | 10h | 1,000 | High | high |  |
| 77 | 1.2.2.2 | Agree on Testing methodology | 0.62d? | 2009-02-20 | 2009-02-20 |  | 150.88d | 0d | John | 5h | 500 | High | High | Core |
| 78 | 1.2.2.3 | Acquire data, Prepare Spreadsheets, Train Testers, etc | 1.25d? | 2009-02-23 | 2009-02-24 | 77 | 150.88d | 0d | John | 10h | 1,000 | High | High | Core |
| 79 | 1.2.2.4 | Americas Testing | 4.38d? | 2009-03-05 | 2009-03-11 | 78 | 242.52d |  | John | 35h | 3,500 | High | High | Core |
| 80 | 1.2.2.5 | Europe Testing | 4.38d? | 2009-02-24 | 2009-03-02 | 78 | 150.88d | 0d | John | 35h | 3,500 | High | High | Core |
| 81 | 1.2.2.6 | Get consensus on Thresholds | 1.25d? | 2009-03-03 | 2009-03-05 | 80 | 246.9d |  | John | 10h | 1,000 | High | High | Core |
| 82 | 1.2.3 | **Document process flow for each path in the core (workflow process flow)** | 11.98d? | 2009-03-10 | 2009-03-26 |  | 144.5d |  |  | 30h | 4,000 |  |  |  |
| 83 | 1.2.3.1 | Evaluate site reactivation | 1.88d? | 2009-03-24 | 2009-03-26 |  | 231.65d |  | John | 15h | 1,500 | Medium | High | Core |
| 84 | 1.2.3.2 | Define status instructions for BPEL (eg reactivate contact points) | 1.25d? | 2009-03-12 | 2009-03-13 |  | 240.75d |  | William | 10h | 2,000 | High | High | Core |
| 85 | 1.2.3.3 | Sign off on process flows | 0.62d? | 2009-03-10 | 2009-03-10 |  | 144.5d | 62d | John | 5h | 500 | Medium | High | Core |
| 86 | 1.2.4 | **Evaluate Compare Methods** | 7d? | 2009-02-23 | 2009-03-03 |  | 149.5d |  |  | 51h | 5,100 |  |  |  |
| 87 | 1.2.4.1 | Agree on Testing methodology | 1.25d? | 2009-02-23 | 2009-02-24 |  | 149.75d | 0d | John | 10h | 1,000 | High | High | Core |
| 88 | 1.2.4.2 | Acquire data | 1d? | 2009-02-24 | 2009-02-25 | 87 | 149.5d | 0d | John | 8h | 800 | High | High | Core |
| 89 | 1.2.4.3 | Address Testing | 1.88d? | 2009-02-25 | 2009-02-27 | 88 | 149.5d | 0d | John | 15h | 1,500 | High | High | Core |
| 90 | 1.2.4.4 | Organization Testing | 1.88d? | 2009-02-27 | 2009-03-03 | 89 | 149.5d | 0d | John | 15h | 1,500 | High | High | Core |
| 91 | 1.2.4.5 | Get consensus on Address and Organization | 0.38d? | 2009-03-03 | 2009-03-03 | 90 | 149.5d | 67d | John | 3h | 300 | High | High | Core |

| ID | WBS | Task | Duration | Start | Finish | Predecessors | Total slack | Free slack | Constraint | Resources | Work | Cost | Text1 | Text2 | Text3 |
| --- | --- | --- | --- | --- | --- | --- | --- | --- | --- | --- | --- | --- | --- | --- | --- |
| 92 | 1.2.5 | **General Requirements** | 73.75d? | 2009-02-24 | 2009-06-05 |  | 145.12d |  |  |  | 79h | 7,900 |  |  |  |
| 93 | 1.2.5.1 | Evaluate needed data updates prior to search (eg country code append)…partner with Kate and Vicky | 1.25d? | 2009-03-30 | 2009-03-31 |  | 228.52d |  |  | John | 10h | 1,000 | High | Medium | Core |
| 94 | 1.2.5.2 | Define super user groups for validation of requirements, DI process | 0.5d? | 2009-04-02 | 2009-04-02 |  | 226.21d |  |  | John | 4h | 400 | Medium |  | Medium |
| 95 | 1.2.5.3 | Requirements and Test for special characters and data load, corrupted data | 1.88d? | 2009-03-26 | 2009-03-30 |  | 229.77d |  |  | John | 15h | 1,500 | Medium | High | Core |
| 96 | 1.2.5.4 | Reprocessing of existing data in pipeline for changes to master settings | 0.62d? | 2009-02-24 | 2009-02-24 |  | 145.12d | 0d |  | John | 5h | 500 | Low | Medium | Core |
| 97 | 1.2.5.5 | Random sample data runs for automation as well as DI | 4.38d? | 2009-03-04 | 2009-03-10 | 96 | 145.12d | 0d |  | John | 35h | 3,500 | Low | High | Core |
| 98 | 1.2.5.6 | Determine root cause for failed matching, for junk, for reprocessing, or for CR | 1.25d? | 2009-03-16 | 2009-03-17 | 97 | 238.21d |  |  | John | 10h | 1,000 | Medium | High | Core |
| 99 | 1.2.5.7 | Requirements Complete | 1d? | 2009-06-05 | 2009-06-05 | 91, 85, 80, 73, 97 | 82.5d | 0d | start no earlier than 2009-06-05 |  |  |  |  |  |  |
| 100 | 1.2.6 | **Development** | 179.89d? | 2009-02-20 | 2009-10-30 |  | 75.86d |  |  |  | 759h | 60,720 | High | High | Core |
| 101 | 1.2.6.1 | Design XML payload | 8.33d? | 2009-08-05 | 2009-08-17 | 99 | 104.25d | 1.67d |  | Raj [90%] | 60h | 4,800 | High | High | Core |
| 102 | 1.2.6.2 | Design core BPELs (match, create, update logic) | 5.56d? | 2009-06-08 | 2009-06-15 | 73, 41, 99 | 114.44d | 0d |  | Raj [90%] | 40h | 3,200 | High | High | Core |
| 103 | 1.2.6.3 | Build BPEL | 16.67d? | 2009-06-26 | 2009-07-21 | 102 | 113.83d | 0d |  | Raj [90%] | 120h | 9,600 | High | High | Core |
| 104 | 1.2.6.4 | Design search web service wrappers | 4.17d? | 2009-07-01 | 2009-07-07 | 73, 41, 99 | 98.06d | 0d |  | Raj [90%] | 30h | 2,400 | High | High | Core |
| 105 | 1.2.6.5 | Evaluate get web service wrappers (map&gap current WS support) | 2.78d? | 2009-02-20 | 2009-02-25 | 73 | 241.72d | 0d |  | Raj [90%] | 20h | 1,600 | High | High | Core |
| 106 | 1.2.6.6 | Build search web service wrappers | 11.11d? | 2009-02-25 | 2009-03-12 | 105 | 241.72d | 165.86d |  | Raj [90%] | 80h | 6,400 | High | High | Core |
| 107 | 1.2.6.7 | Build error q and management | 11.11d? | 2009-10-06 | 2009-10-21 | 99 | 82.5d | 6.64d |  | Raj [90%] | 80h | 6,400 | Medium | High | Core |
| 108 | 1.2.6.8 | Design ESB/BPEL queue listeners | 2.78d? | 2009-02-20 | 2009-02-25 | 73 | 252.83d | 176.97d |  | Raj [90%] | 20h | 1,600 | High | High | Core |
| 109 | 1.2.6.9 | Design metadata object architecture | 6.94d? | 2009-08-12 | 2009-08-21 | 99 | 90.83d | 0.23d |  | Raj [90%] | 50h | 4,000 | High | High | Core |
| 110 | 1.2.6.10 | Define interaction mechanisms for metadata | 2.22d? | 2009-10-05 | 2009-10-07 | 109 | 92.64d | 16.78d |  | Raj [90%] | 16h | 1,280 | Low | High | Core |
| 111 | 1.2.6.11 | Design results / UP update queue | 0.56d? | 2009-09-14 | 2009-09-14 | 101 | 102.64d | 0d |  | Raj [90%] | 4h | 320 | High | High | Core |
| 112 | 1.2.6.12 | Build new Sync Functionality for Change Source | 5.56d? | 2009-09-14 | 2009-09-22 | 111 | 102.64d | 0d |  | Raj [90%] | 40h | 3,200 | High | High | Core |
| 113 | 1.2.6.13 | Define sequence of bringing tiers up and down | 1.11d? | 2009-09-22 | 2009-09-23 | 112 | 102.64d | 26.78d |  | Raj [90%] | 8h | 640 | High | High | Core |
| 114 | 1.2.6.14 | Additional Development Work | 13.89d? | 2009-09-11 | 2009-10-01 | 104 | 96.06d | 20.19d |  | Raj [90%] | 100h | 8,000 | High | High | Core |
| 115 | 1.2.6.15 | Define data recovery plan for errant BPELs | 11.11d? | 2009-08-12 | 2009-08-27 | 103 | 113.71d | 0d |  | Raj [90%] | 80h | 6,400 | High | High | Core |
| 116 | 1.2.6.16 | Create AutoDeploys/Installers | 1.39d? | 2009-09-04 | 2009-09-08 | 115 | 113.83d | 37.97d |  | Raj [90%] | 10h | 800 | High | High | Core |
| 117 | 1.2.6.17 | Dev Complete | 0.14d? | 2009-10-30 | 2009-10-30 | 116, 101, 102, 103, 104, 105, 106, 107, 108, 109, 110, 111, 113, 114, 115 | 75.86d |  | start no earlier than 2009-10-30 | Raj [90%] | 1h | 80 | High | High | Core |

| ID | WBS | Task | Type | Duration | Start | Finish | Predecessors | Total slack | Free slack | Constraint | Resources | Work | Cost | Text1 | Text2 | Text3 |
| --- | --- | --- | --- | --- | --- | --- | --- | --- | --- | --- | --- | --- | --- | --- | --- | --- |
| 118 | 1.3 | **Manual Processing** |  | 208.67d? | 2009-02-12 | 2009-12-01 |  | 53.33d |  |  |  | 970h | 96,900 |  |  |  |
| 119 | 1.3.1 | **Document business requirements** |  | 86.33d? | 2009-02-12 | 2009-06-12 |  | 58.51d |  |  |  | 280h | 28,000 |  |  |  |
| 120 | 1.3.1.1 | Understand as is functionality, Evaluate Current gaps |  | 5.83d? | 2009-02-12 | 2009-02-19 |  | 58.51d | 0d |  | Wendy [75%] | 35h | 3,500 | High | High | DI Process |
| 121 | 1.3.1.2 | Create interview questions and interview users of the Data Entry group |  | 16.67d? | 2009-02-19 | 2009-03-16 | 120 | 58.51d | 0d |  | Wendy [75%] | 100h | 10,000 | High | High | DI Process |
| 122 | 1.3.1.3 | Define priority management tool at individual record level (move SLA risk records to top of q) |  | 2.5d? | 2009-06-05 | 2009-06-09 | 120 | 178.17d |  |  | Wendy [75%] | 15h | 1,500 | Medium | Medium | DI Process |
| 123 | 1.3.1.4 | Mock ups for DI UI and conduct focus groups |  | 8.33d? | 2009-03-16 | 2009-03-26 | 121 | 58.51d | 0d |  | Wendy [75%] | 50h | 5,000 | Medium | High | DI Process |
| 124 | 1.3.1.5 | Define search capabilities of interface (Bring in record based on priority, criteria) |  | 3.33d? | 2009-05-12 | 2009-05-18 | 121 | 194.83d |  |  | Wendy [75%] | 20h | 2,000 | Medium | High | DI Process |
| 125 | 1.3.1.6 | Evaluate feature to allow manual edit of incoming record |  | 2.5d? | 2009-06-09 | 2009-06-12 | 120 | 175.67d |  |  | Wendy [75%] | 15h | 1,500 | Medium | High | DI Process |
| 126 | 1.3.1.7 | Determine address standardization, validation rules (Need 3 party tool?) |  | 6.67d? | 2009-05-05 | 2009-05-13 | 120 | 197.33d |  |  | Wendy [75%] | 40h | 4,000 | High | Medium | DI Process |
| 127 | 1.3.1.8 | Set priorities for records that get re-queued to core |  | 0.83d? | 2009-05-18 | 2009-05-18 | 121 | 194d |  |  | Wendy [75%] | 5h | 500 | Medium | Medium | DI Process |
| 128 | 1.3.2 | **Document system requirements** |  | 86.14d? | 2009-03-16 | 2009-07-14 |  | 143.09d |  |  |  | 124h | 12,300 |  |  |  |
| 129 | 1.3.2.1 | Document User access requirements |  | 1.33d? | 2009-03-26 | 2009-03-30 | 121 | 162.83d | 0d |  | Wendy [75%] | 8h | 800 | Low | High | DI Process |
| 130 | 1.3.2.2 | Audit/List of fields for manual review |  | 2d? | 2009-06-12 | 2009-06-16 | 120 | 173.67d |  |  | Wendy [75%] | 12h | 1,200 | Medium | High | DI Process |
| 131 | 1.3.2.3 | Define capability to manage statuses (rejected, approved, onhold, junk) at record or batch level |  | 1.33d? | 2009-07-10 | 2009-07-14 |  | 153.7d |  |  | Wendy [75%] | 8h | 800 | Low | High | DI Process |
| 132 | 1.3.2.4 | Determine fields that user can modify/edit, view only, or add (keep or overwrite) |  | 4.17d? | 2009-04-09 | 2009-04-15 | 123 | 217.33d |  |  | Wendy [75%] | 25h | 2,500 | Medium | High | DI Process |
| 133 | 1.3.2.5 | Define data architecture requirements (eg site use) |  | 3.33d? | 2009-06-02 | 2009-06-05 | 120 | 180.67d |  |  | Wendy [75%] | 20h | 2,000 | Medium | High | DI Process |
| 134 | 1.3.2.6 | Country Specific Data Requirments (own line item, this is separate from one above) |  | 8.33d? | 2009-03-16 | 2009-03-26 | 120 | 143.09d | 39.5d |  | Wendy [75%] | 50h | 5,000 | High | High | DI Process |
| 135 | 1.3.2.7 | Requirements Complete |  | 1d? | 2009-05-21 | 2009-05-21 | 134 | 103.59d | 0d | start no earlier than 2009-05-21 |  | 1h |  | High | High | DI Process |
| 136 | 1.3.3 | **Create business process flow charts** |  | 19.17d? | 2009-04-15 | 2009-05-12 |  | 198.17d |  |  |  | 115h | 11,500 |  |  |  |
| 137 | 1.3.3.1 | Define close loop processes (alert to end users when contact is rejected) |  | 5.83d? | 2009-04-28 | 2009-05-05 | 121 | 203.17d |  |  | Wendy [75%] | 35h | 3,500 | Medium | High | DI Process |
| 138 | 1.3.3.2 | Define workflow process/ resolution process / process flows |  | 8.33d? | 2009-04-15 | 2009-04-27 | 121 | 209d |  |  | Wendy [75%] | 50h | 5,000 | High | High | DI Process |
| 139 | 1.3.3.3 | Define use cases for manual intervention |  | 5d? | 2009-05-05 | 2009-05-12 | 121 | 198.17d |  |  | Wendy [75%] | 30h | 3,000 | High | High | DI Process |
| 140 | 1.3.4 | **Development** |  | 177.83d? | 2009-03-26 | 2009-12-01 |  | 53.33d |  |  |  | 451h | 45,100 |  |  |  |
| 141 | 1.3.4.1 | Create prototype for Data Entry interface | milestone | 0d? | 2009-08-10 | 2009-08-10 |  | 112.26d | 59d | start no earlier than 2009-08-10 | Karen [75%] |  |  | High | High | DI process |
| 142 | 1.3.4.2 | Develop Purging mechanism for workflow data |  | 3.33d? | 2009-05-22 | 2009-05-27 | 135 | 187.67d |  |  | Karen [75%] | 20h | 2,000 | High | High | DI process |
| 143 | 1.3.4.3 | Define remaining Data Entry API actions |  | 1.33d? | 2009-05-22 | 2009-05-25 | 135 | 189.67d |  |  | Karen [75%] | 8h | 800 | High | High | DI process |
| 144 | 1.3.4.4 | Evaluate real-time rematching logic | milestone | 0d? | 2009-08-16 | 2009-08-16 | 135 | 107.26d | 54d |  | Karen [75%] |  |  | Low | High | DI Process |
| 145 | 1.3.4.5 | Develop interface between queue and Data Architecture |  | 13.33d? | 2009-05-29 | 2009-06-17 | 161, 174 | 149.76d | 96.5d |  | Karen [75%] | 80h | 8,000 | High | High | DI Process |
| 146 | 1.3.4.6 | User login, access mechanism |  | 2d? | 2009-05-01 | 2009-05-05 | 129 | 160.17d | 0d |  | Karen [75%] | 12h | 1,200 | Low | High | DI Process |
| 147 | 1.3.4.7 | Architectural review of platform | milestone | 0d? | 2009-05-05 | 2009-05-05 | 146 | 160.17d | 12.17d |  | Karen [75%] |  |  | High | High | DI process |
| 148 | 1.3.4.8 | Platform decision for User Interface | milestone | 0d? | 2009-05-24 | 2009-05-24 | 135, 147 | 150d | 2d |  | Karen [75%] |  |  | High | High | DI process |
| 149 | 1.3.4.9 | Technical Designs |  | 6.67d? | 2009-06-08 | 2009-06-16 | 148 | 148.33d | 0d |  | Karen [75%] | 40h | 4,000 | High | High | DI process |
| 150 | 1.3.4.10 | Design review of Data Entry solution |  | 1.67d? | 2009-06-18 | 2009-06-22 | 149 | 147.13d | 93.88d |  | Karen [75%] | 10h | 1,000 | Medium | High | DI Process |
| 151 | 1.3.4.11 | Define DB objects for Data Entry design |  | 6.67d? | 2009-08-12 | 2009-08-20 | 135 | 103.59d | 50.33d |  | Karen [75%] | 40h | 4,000 | High | High | DI process |
| 152 | 1.3.4.12 | Data Entry Application Development |  | 33.33d? | 2009-03-26 | 2009-05-13 | 123 | 58.51d | 0d |  | Karen [75%] | 200h | 20,000 | High | High | DI process |
| 153 | 1.3.4.13 | Develop Alerting Mechanisms | milestone | 0d? | 2009-05-31 | 2009-05-31 | 152 | 157.26d | 0d |  | Karen [75%] |  |  | Medium | Medium | DI Process |
| 154 | 1.3.4.14 | Implement Audit calls |  | 1.67d? | 2009-06-01 | 2009-06-02 | 153 | 157.26d | 0d |  | Karen [75%] | 10h | 1,000 | Medium | Medium | DI Process |
| 155 | 1.3.4.15 | Create installs and rollbacks for Data Entry solution |  | 1.67d? | 2009-06-02 | 2009-06-04 | 154 | 157.26d | 0d |  | Karen [75%] | 10h | 1,000 | High | High | DI Process |
| 156 | 1.3.4.16 | Code review of Data Entry solution |  | 1.67d? | 2009-06-04 | 2009-06-05 | 155 | 157.26d | 104d |  | Karen [75%] | 10h | 1,000 | Medium | High | DI Process |
| 157 | 1.3.4.17 | Development Complete |  | 0.17d? | 2009-10-30 | 2009-10-30 | 156, 141, 144, 145, 146, 147, 149, 150, 151, 152, 153 | 53.26d | 0.83d | start no earlier than 2009-10-30 | Karen [75%] | 1h | 100 | High | High | DI Process |
| 158 | 1.3.4.18 | Create installs and rollbacks for Data Entry solution |  | 1.67d? | 2009-11-30 | 2009-12-01 | 157 | 53.33d |  |  | Karen [75%] | 10h | 1,000 | High | High | DI Process |

| ID | WBS | Task | Duration | Start | Finish | Predecessors | Total slack | Free slack | Constraint | Resources | Work | Cost | Text1 | Text2 | Text3 |
| --- | --- | --- | --- | --- | --- | --- | --- | --- | --- | --- | --- | --- | --- | --- | --- |
| 159 | 1.4 | **Audit Tracking and Error Mgmt** | 202.94d? | 2009-02-12 | 2009-11-23 |  | 59.06d |  |  |  | 176h | 17,233.21 |  |  |  |
| 160 | 1.4.1 | Evaluate WAP processes and impact | 1d? | 2009-04-14 | 2009-04-15 |  | 117.08d | 0d |  | Jane [50%] | 4h | 400 | Low | Medium | Intake Process |
| 161 | 1.4.2 | Error management requirements | 3.75d? | 2009-04-24 | 2009-04-30 | 160 | 117.08d | 0d |  | Jane [50%] | 15h | 1,500 | Low | High | Intake Process |
| 162 | 1.4.3 | Understand current process and determine new requirements for testing and troubleshooting | 1d? | 2009-05-04 | 2009-05-05 | 161 | 119.08d | 0d |  | Jane [50%] | 4h | 400 | Low | Medium | Intake Process |
| 163 | 1.4.4 | Requirements for Audit tracking | 3.75d? | 2009-05-05 | 2009-05-08 | 162 | 119.08d | 0d |  | Jane [50%] | 15h | 1,500 | Low | Medium | Intake Process |
| 164 | 1.4.5 | Alerts mechanism | 1d? | 2009-02-12 | 2009-02-12 |  | 260d | 140.68d |  | Karen [75%] | 6h | 600 | Low | Medium | Intake Process |
| 165 | 1.4.6 | Define audit requirements | 5d? | 2009-05-26 | 2009-06-01 | 161 | 184d |  |  | Wendy [75%] | 30h | 3,000 | Medium | Medium | DI Process |
| 166 | 1.4.7 | Evaluate Alerting Needs | 3.33d? | 2009-05-20 | 2009-05-25 | 163 | 119.32d | 0d |  | Wendy [75%] | 20h | 2,000 | Low | Medium | DI Process |
| 167 | 1.4.8 | Develop Display System Status | 0.94d? | 2009-11-23 | 2009-11-23 | 152 | 59.06d |  |  | Karen [75%]; Jeffrey; Raj [90%] | 20h | 1,713.21 | Low | Medium | DI Process |
| 168 | 1.4.9 | Identify monitoring checkpoints | 1.67d? | 2009-07-07 | 2009-07-08 |  | 157d |  |  | Wendy [75%] | 10h | 1,000 | Medium | High | DI Process |
| 169 | 1.4.10 | Audit mechanism for inflow and outflow | 0.56d? | 2009-04-30 | 2009-04-30 | 161 | 205.28d | 85.96d |  | Raj [90%] | 4h | 320 | Low | Medium | CDL Core |
| 170 | 1.4.11 | Define audit mechanisms (on SOA, Oracle) | 5.56d? | 2009-08-21 | 2009-08-28 | 166 | 119.32d | 0d |  | Raj [90%] | 40h | 3,200 | Medium | Medium | CDL Core |
| 171 | 1.4.12 | Dev Complete | 1d? | 2009-08-28 | 2009-08-31 | 164, 170, 169 | 119.32d |  |  | William | 8h | 1,600 | High | High | CDL Core |
| 172 | 1.5 | **Reporting and Alerts** | 127.05d? | 2009-05-01 | 2009-10-27 |  | 78.78d |  |  |  | 391h | 58,880.96 |  |  |  |
| 173 | 1.5.1 | Define how SLA reports will be measured | 1d? | 2009-05-01 | 2009-05-04 |  | 79.83d | 0d |  | Jane [50%]; Karen [75%] | 10h | 1,000 | Medium | Medium | Intake Process |
| 174 | 1.5.2 | Define requirements for end user reports | 5d? | 2009-05-13 | 2009-05-20 | 173 | 78.78d | 0d |  | Wendy [75%] | 30h | 3,000 | Low | Medium | DI Process |
| 175 | 1.5.3 | Metrics and reports - technology and tools | 3.79d? | 2009-10-02 | 2009-10-08 | 174 | 78.78d | 0d |  | Karen [75%]; Raj [90%] | 50h | 4,454.55 | Low | Medium | DI Process |
| 176 | 1.5.4 | Determine Reporting Architecture | 1.89d? | 2009-10-22 | 2009-10-26 | 175 | 78.78d | 0d |  | Karen [75%]; Raj [90%]; Jeffrey | 40h | 3,426.42 | Low | High | DI process |
| 177 | 1.5.5 | Design Quality Report (linking) - Intake Queue | 1d? | 2009-10-26 | 2009-10-27 | 176 | 78.78d |  |  | Lydia [50%] | 4h | 400 | Low | Medium | Intake Process |
| 178 | 1.5.6 | Reports - technology and tools | 25d? | 2009-08-03 | 2009-09-04 |  | 115d |  | start no earlier than 2009-08-03 | Tiffany | 200h | 40,000 | Medium | Medium | Intake Process |
| 179 | 1.5.7 | Design alerting for core | 5.56d? | 2009-10-14 | 2009-10-21 | 99 | 82.32d | 0d |  | Raj [90%] | 40h | 3,200 | High | High | Core |
| 180 | 1.5.8 | Alert for BPEL backlog prior to match processing (in loader q) | 1d? | 2009-08-17 | 2009-08-17 |  | 128d | 0d | start no earlier than 2009-08-17 | Samantha | 8h | 1,600 | Medium | Medium | Core |
| 181 | 1.5.9 | Alerts for backlog table | 1d? | 2009-08-18 | 2009-08-18 | 180 | 128d |  |  | Samantha | 8h | 1,600 | Medium | Medium | Core |
| 182 | 1.5.10 | Dev Complete | 0.12d? | 2009-10-21 | 2009-10-21 | 179 | 82.32d |  |  | William | 1h | 200 | High | High | Core |

| ID | WBS | Task | Type | Duration | Start | Finish | Predecessors | Total slack | Free slack | Constraint | Resources | Work | Cost | Text1 | Text2 | Text3 |
| --- | --- | --- | --- | --- | --- | --- | --- | --- | --- | --- | --- | --- | --- | --- | --- | --- |
| 183 | 2 | **Testing** |  | 135d? | 2009-08-03 | 2010-02-05 |  | 5d |  |  |  | 2350.4h | 228,239.72 |  |  |  |
| 184 | 2.1 | **Unit Testing** |  | 64.81d? | 2009-08-03 | 2009-10-30 |  | 75.19d |  |  |  | 880h | 90,400 |  |  |  |
| 185 | 2.1.1 | **IT Unit Testing** |  | 10.56d? | 2009-10-12 | 2009-10-26 |  | 79.44d |  |  |  | 160h | 18,400 |  |  |  |
| 186 | 2.1.1.1 | Unit testing the Data Entry solution - IT |  | 5d? | 2009-10-19 | 2009-10-23 |  | 80d |  | start no earlier than 2009-10-19 | William | 40h | 8,000 | High | High | DI Process |
| 187 | 2.1.1.2 | Junk: Load test/tuning/optimization for migration |  | 3.33d? | 2009-10-12 | 2009-10-15 |  | 86.67d |  | start no earlier than 2009-10-12 | Karen [75%] | 20h | 2,000 |  |  |  |
| 188 | 2.1.1.3 | Junk: Load test/tuning/optimization for task put callout |  | 3.33d? | 2009-10-19 | 2009-10-22 |  | 81.67d |  | start no earlier than 2009-10-19 | Karen [75%] | 20h | 2,000 |  |  |  |
| 189 | 2.1.1.4 | Load test functionality of core |  | 5.56d? | 2009-10-19 | 2009-10-26 |  | 79.44d |  | start no earlier than 2009-10-19 | Raj [90%] | 40h | 3,200 | High | High | Core |
| 190 | 2.1.1.5 | Development and testing for troubleshooting across the sytem |  | 5.56d? | 2009-10-12 | 2009-10-19 |  | 84.44d |  | start no earlier than 2009-10-12 | Raj [90%] | 40h | 3,200 | Low | Medium | Core |
| 191 | 2.1.2 | **Business Unit Testing** |  | 64.81d? | 2009-08-03 | 2009-10-30 |  | 75.19d |  |  |  | 720h | 72,000 |  |  |  |
| 192 | 2.1.2.1 | Create Test Plan for Intake |  | 8.33d? | 2009-08-03 | 2009-08-13 |  | 131.67d |  | start no earlier than 2009-08-03 | Jane [50%]; Lydia | 100h | 10,000 | Low |  | Intake Process |
| 193 | 2.1.2.2 | Unit testing the Data Entry solution - Business |  | 7.14d? | 2009-10-12 | 2009-10-21 |  | 82.86d |  | start no earlier than 2009-10-12 | Wendy [75%]; Lydia | 100h | 10,000 |  | High | DI Process |
| 194 | 2.1.2.3 | Unit test functionality of core |  | 12.5d? | 2009-10-12 | 2009-10-28 |  | 77.5d |  | start no earlier than 2009-10-12 | John | 100h | 10,000 | Low | High | Core |
| 195 | 2.1.2.4 | Unit Testing of Reports |  | 4.81d? | 2009-10-26 | 2009-10-30 |  | 75.19d |  | start no earlier than 2009-10-26 | Lydia; John; Jane [60%] | 100h | 10,000 |  |  |  |
| 196 | 2.1.2.5 | Scripting Integration Testing |  | 6.25d? | 2009-10-19 | 2009-10-27 |  | 78.75d |  | start no earlier than 2009-10-19 | Lydia | 50h | 5,000 |  |  |  |
| 197 | 2.1.2.6 | Create test plan for UI and user process |  | 16.67d? | 2009-08-03 | 2009-08-25 |  | 123.33d |  | start no earlier than 2009-08-03 | Wendy [75%] | 100h | 10,000 | Low |  | DI Process |
| 198 | 2.1.2.7 | Test search times |  | 11.67d? | 2009-10-05 | 2009-10-20 |  | 83.33d |  | start no earlier than 2009-10-05 | Wendy [75%] | 70h | 7,000 | Low |  | Core |
| 199 | 2.1.2.8 | Define test plan for core |  | 12.5d? | 2009-08-03 | 2009-08-19 |  | 127.5d |  | start no earlier than 2009-08-03 | John | 100h | 10,000 | Low |  | Core |
| 200 | 2.2 | **Integration Testing - Round 1** |  | 10d? | 2009-11-02 | 2009-11-13 |  | 65d |  |  |  | 376h | 34,880 |  |  |  |
| 201 | 2.2.1 | Installs |  | 10d | 2009-11-02 | 2009-11-13 |  | 65d | 0d | start no earlier than 2009-11-02 | John; Jane [50%]; Wendy [75%]; Karen [75%]; Raj [90%]; Joseph [80%] | 376h | 34,880 | High | High |  |
| 202 | 2.2.2 | Setups | milestone | 0d? | 2009-11-13 | 2009-11-13 | 201 | 65d |  |  | John; Wendy [75%]; Jane [50%] |  |  | High | High |  |
| 203 | 2.2.3 | Monitor hub and all tiers under load (sizing/scaling decision) | milestone | 0d? | 2009-11-13 | 2009-11-13 | 201 | 65d |  |  | William |  |  | High | High | Core |
| 204 | 2.2.4 | Extreme testing | milestone | 0d? | 2009-11-13 | 2009-11-13 | 201 | 65d |  |  | John |  |  | Low | High | Core |
| 205 | 2.2.5 | Create Load test scripts | milestone | 0d? | 2009-11-13 | 2009-11-13 | 201 | 65d |  |  | William |  |  | High | High | Intake Queue |
| 206 | 2.2.6 | Create Load Capacity test Scripts | milestone | 0d? | 2009-11-13 | 2009-11-13 | 201 | 65d |  |  | William |  |  | High | High | DI Process |
| 207 | 2.2.7 | Intake Queue Testing | milestone | 0d? | 2009-11-13 | 2009-11-13 | 201 | 65d |  |  | Jane [50%]; Lydia |  |  | High | High |  |
| 208 | 2.2.8 | Test massive failure scenarios/break the system | milestone | 0d? | 2009-11-13 | 2009-11-13 | 201 | 65d |  |  | William |  |  | High | High |  |
| 209 | 2.2.9 | Performance / tuning testing | milestone | 0d? | 2009-11-13 | 2009-11-13 | 201 | 65d |  |  | William |  |  | Low | High | DI Process |
| 210 | 2.2.10 | Load capacity testing (concurrent users on the system and backlog of untouched tasks) | milestone | 0d? | 2009-11-13 | 2009-11-13 | 201 | 65d |  |  | Wendy [75%] |  |  | Medium | High | DI process |
| 211 | 2.2.11 | Load test to gauge impact to ni.com | milestone | 0d? | 2009-11-13 | 2009-11-13 | 201 | 65d |  |  | William |  |  | High | High | Intake Process |
| 212 | 2.2.12 | Core Testing | milestone | 0d? | 2009-11-13 | 2009-11-13 | 201 | 65d |  |  | John |  |  | High | High |  |
| 213 | 2.2.13 | Data Entry Testing | milestone | 0d? | 2009-11-13 | 2009-11-13 | 201 | 65d |  |  | Wendy [75%] |  |  | high | high |  |

| ID | WBS | Task | Type | Duration | Start | Finish | Predecessors | Total slack | Free slack | Constraint | Resources | Work | Cost | Text1 | Text2 | Text3 |
| --- | --- | --- | --- | --- | --- | --- | --- | --- | --- | --- | --- | --- | --- | --- | --- | --- |
| 214 | 2.3 | **Integration Testing - Round 2** |  | 10.82d? | 2009-12-07 | 2009-12-21 |  | 39.18d |  |  |  | 493.6h | 46,415.72 |  |  |  |
| 215 | 2.3.1 | Installs |  | 10d | 2009-12-07 | 2009-12-18 |  | 39.18d | 0d | start no earlier than 2009-12-07 | John; Jane [50%]; Wendy [75%]; Karen [75%]; Raj [90%]; Joseph [80%]; Lydia | 456h | 42,880 | High | High |  |
| 216 | 2.3.2 | Setups | milestone | 0d? | 2009-12-18 | 2009-12-18 | 215 | 39.18d | 0d |  | John; Jane [50%]; Wendy [75%]; Karen [75%]; Raj [90%]; Joseph [80%]; Lydia |  |  | High | High |  |
| 217 | 2.3.3 | Intake Queue Testing | milestone | 0d? | 2009-12-18 | 2009-12-18 | 216 | 40d |  |  | John; Jane [50%]; Wendy [75%]; Karen [75%]; Raj [90%]; Joseph [80%]; Lydia |  |  | High | High |  |
| 218 | 2.3.4 | Test regression impact of existing hub consumers (load) | milestone | 0d? | 2009-12-18 | 2009-12-18 | 216 | 40d |  |  | John; Jane [50%]; Wendy [75%]; Karen [75%]; Raj [90%]; Joseph [80%]; Lydia |  |  | Medium | Medium |  |
| 219 | 2.3.5 | Core Testing | milestone | 0d? | 2009-12-18 | 2009-12-18 | 216 | 40d |  |  | John; Jane [50%]; Wendy [75%]; Karen [75%]; Raj [90%]; Joseph [80%]; Lydia |  |  | High | High |  |
| 220 | 2.3.6 | Data Entry Testing |  | 0.82d? | 2009-12-21 | 2009-12-21 | 216 | 39.18d |  |  | John; Jane [50%]; Wendy [75%]; Karen [75%]; Raj [90%]; Joseph [80%]; Lydia | 37.6h | 3,535.72 | High | High |  |
| 221 | 2.4 | **Integration Testing - Round 3** |  | 10d? | 2010-01-18 | 2010-01-29 |  | 5d |  |  |  | 456h | 42,880 |  |  |  |
| 222 | 2.4.1 | Installs |  | 10d | 2010-01-18 | 2010-01-29 |  | 5d | 0d | start no earlier than 2010-01-18 | John; Jane [50%]; Wendy [75%]; Karen [75%]; Raj [90%]; Joseph [80%]; Lydia | 456h | 42,880 | High | High |  |
| 223 | 2.4.2 | Setups | milestone | 0d? | 2010-01-29 | 2010-01-29 | 222 | 5d | 0d |  | John |  |  | High | High |  |
| 224 | 2.4.3 | Intake Queue Testing | milestone | 0d? | 2010-01-29 | 2010-01-29 | 223 | 10d |  |  | John |  |  | High | High |  |
| 225 | 2.4.4 | Core Testing | milestone | 0d? | 2010-01-29 | 2010-01-29 | 223 | 10d |  |  | John |  |  | High | High |  |
| 226 | 2.4.5 | Data Entry Testing | milestone | 0d? | 2010-01-29 | 2010-01-29 | 223 | 5d | 0d |  | John |  |  | High | High |  |
| 227 | 2.5 | **Mock Go-Live** |  | 5d | 2010-02-01 | 2010-02-05 |  | 5d |  |  |  | 144.8h | 13,664 |  |  |  |
| 228 | 2.5.1 | Installs |  | 3d | 2010-02-01 | 2010-02-03 | 226 | 5d | 0d |  | John; Jane [50%]; Wendy [75%]; Karen [75%]; Raj [90%]; Joseph [80%] | 112.8h | 10,464 | High | High |  |
| 229 | 2.5.2 | Setups |  | 1d | 2010-02-04 | 2010-02-04 | 228 | 5d | 0d |  | John | 8h | 800 | High | High |  |
| 230 | 2.5.3 | Intake Queue Testing |  | 1d | 2010-02-05 | 2010-02-05 | 229 | 5d |  |  | John | 8h | 800 | High | High |  |
| 231 | 2.5.4 | Core Testing |  | 1d | 2010-02-05 | 2010-02-05 | 229 | 5d |  |  | John | 8h | 800 | High | High |  |
| 232 | 2.5.5 | Data Entry Testing |  | 1d | 2010-02-05 | 2010-02-05 | 229 | 5d |  |  | John | 8h | 800 | High | High |  |
| 233 | 3 | **Training & Implementation** |  | 262d? | 2009-02-12 | 2010-02-13 |  | 0d |  |  |  | 116h | 16,000 |  |  |  |
| 234 | 3.1 | Train business users on metadata |  | 0.5d? | 2009-03-13 | 2009-03-13 |  | 240.25d |  |  | William | 4h | 800 | Low | Medium | Core |
| 246 | 3.2 | End User Documentation |  | 1d? | 2009-02-12 | 2009-02-12 |  | 327.11d |  |  |  |  |  |  |  |  |
| 236 | 3.3 | Business Process Documentation |  | 2.5d? | 2009-07-01 | 2009-07-03 |  | 160.12d |  |  | Jane [50%] | 10h | 1,000 |  |  | Intake Process |
| 237 | 3.4 | Go Live | milestone | 0d? | 2010-02-13 | 2010-02-13 | 232 | 0d |  | start no earlier than 2010-02-13 |  |  |  |  |  |  |
| 238 | 3.5 | Create post go-live test plan for Intake Queue |  | 6d? | 2009-06-12 | 2009-06-22 |  | 169.96d |  |  | Jane [50%] | 24h | 2,400 |  |  |  |
| 239 | 3.6 | Create training for users |  | 5d? | 2009-06-30 | 2009-07-07 |  | 158.67d |  |  | Wendy [75%] | 30h | 3,000 | Low | High | DI Process |
| 240 | 3.7 | Documentation of Data Entry solution - IT |  | 5d? | 2009-03-05 | 2009-03-11 |  | 242d |  |  | William | 40h | 8,000 | Low | High | DI Process |
| 241 | 3.8 | Documentation of DI solution - Business |  | 1.33d? | 2009-07-14 | 2009-07-15 |  | 152.36d |  |  | Wendy [75%] | 8h | 800 | Low | High | DI Process |
